Schedule from OmniPlan.
Project start 2016-01-28

## Resources

| Resource | Group |
| --- | --- |
| Resource 1 | staff |
| Equipment 1 | equipment |
| Material 1 | material |
| Group 1 | group |
| 黄玉辉 | staff |
| 李世杰 | staff |
| 陈番顺 | staff |

## Schedule

| ID | WBS | Task | Predecessors | Complete | Constraint | Resources | Work | Actual work |
| --- | --- | --- | --- | --- | --- | --- | --- | --- |
| 1 | 1 | **直播秀_iOS_V0.1.0_开发计划** |  |  |  |  |  |  |
| 2 | 1.1 | **UIUX Framework** |  |  |  |  |  |  |
| 3 | 1.1.1 | TabBarController |  | 100% |  | 黄玉辉 | 8h | 8h |
| 4 | 1.1.2 | NavigationController | 3 | 100% |  | 黄玉辉 | 4h | 4h |
| 5 | 1.2 | **直播广场** | 2 |  |  |  |  |  |
| 6 | 1.2.1 | 直播广场（主界面） |  | 100% |  | 黄玉辉 | 4h | 4h |
| 7 | 1.2.2 | 好友直播 | 6 | 100% |  | 黄玉辉 | 4h | 4h |
| 8 | 1.2.3 | 热门直播 | 7 | 100% |  | 黄玉辉 | 4h | 4h |
| 9 | 1.2.4 | **最新直播** | 8 |  |  |  |  |  |
| 10 | 1.2.4.1 | 最新直播（主界面） |  | 100% | start no earlier than 2016-02-04 | 黄玉辉 | 4h | 4h |
| 11 | 1.2.4.2 | 达人推荐 | 10 | 100% |  | 黄玉辉 | 4h | 4h |
| 12 | 1.3 | **我的主页** |  |  |  |  |  |  |
| 13 | 1.3.1 | 我的主页（主界面） |  | 100% | start no earlier than 2016-02-01 | 李世杰 | 8h | 8h |
| 14 | 1.3.2 | 我的直播 | 13 | 100% |  | 李世杰 | 8h | 8h |
| 15 | 1.3.3 | 我的关注 | 14 | 100% |  | 李世杰 | 8h | 8h |
| 16 | 1.3.4 | 我的粉丝 | 15 | 100% |  | 李世杰 | 4h | 4h |
| 17 | 1.3.5 | **私信** | 16 |  |  |  |  |  |
| 18 | 1.3.5.1 | 私信（主界面） |  | 100% |  | 李世杰 | 4h | 4h |
| 19 | 1.3.5.2 | 未关注人消息 | 18 | 100% |  | 李世杰 | 4h | 4h |
| 20 | 1.3.6 | **编辑资料** | 17 |  |  |  |  |  |
| 21 | 1.3.6.1 | 编辑资料（主界面） |  | 100% |  | 李世杰 | 4h | 4h |
| 22 | 1.3.6.2 | 选择头像 | 21 | 100% |  | 李世杰 | 4h | 4h |
| 23 | 1.3.6.3 | 编辑昵称 | 22 | 100% |  | 李世杰 | 2h | 2h |
| 24 | 1.3.6.4 | 选择性别 | 23 | 100% |  | 李世杰 | 2h | 2h |
| 25 | 1.3.6.5 | 编辑个性签名 | 24 | 100% |  | 李世杰 | 2h | 2h |

Notes:
- 1: 13 / 9 / 高亮说明： / 13 / 9 / - / 13 / 9 / 黄色：暂无法开发 / 13 / 9 / - / 13 / 9 / 绿色：可重用模块

| ID | WBS | Task | Predecessors | Complete | Constraint | Resources | Work | Actual work |
| --- | --- | --- | --- | --- | --- | --- | --- | --- |
| 26 | 1.3.7 | **我的收益** | 20 |  |  |  |  |  |
| 27 | 1.3.7.1 | 我的收益（主界面） |  | 100% |  | 李世杰 | 4h | 4h |
| 28 | 1.3.7.2 | 兑换界面 | 27 |  |  | 李世杰 | 4h |  |
| 29 | 1.3.7.3 | 微信提现 | 28 |  |  | 李世杰 | 2h |  |
| 30 | 1.3.7.4 | 提现记录 | 29 |  |  | 李世杰 | 2h |  |
| 31 | 1.3.8 | 我的等级 | 26 |  |  | 李世杰 |  |  |
| 32 | 1.3.9 | 我的钻石 | 31 |  |  | 李世杰 | 4h |  |
| 33 | 1.3.10 | 更改头像 | 32 |  |  | 李世杰 | 4h |  |
| 34 | 1.3.11 | **设置** | 33 |  |  |  |  |  |
| 35 | 1.3.11.1 | 设置（主界面） |  |  |  | 李世杰 | 2h |  |
| 36 | 1.3.11.2 | 黑名单 | 35 |  |  | 李世杰 | 2h |  |
| 37 | 1.3.11.3 | 推送管理 | 36 |  |  | 李世杰 | 4h |  |
| 38 | 1.3.11.4 | 关于映客 | 37 |  |  | 李世杰 |  |  |
| 39 | 1.3.11.5 | 用户反馈 | 38 |  |  | 李世杰 |  |  |
| 40 | 1.4 | **TA的主页** | 12 |  |  |  |  |  |
| 41 | 1.4.1 | TA的主页（主界面） |  |  |  | 李世杰 | 12h |  |
| 42 | 1.4.2 | TA的直播 | 41 |  |  | 李世杰 | 4h |  |
| 43 | 1.4.3 | TA的关注 | 42 |  |  | 李世杰 | 4h |  |
| 44 | 1.4.4 | TA的粉丝 | 43 |  |  | 李世杰 | 4h |  |
| 45 | 1.5 | **视频直播** |  |  |  |  |  |  |
| 46 | 1.5.1 | 视频层 |  |  | start no earlier than 2016-02-01 | 陈番顺 | 40h |  |
| 47 | 1.5.2 | **信息层** | 9 |  |  |  |  |  |
| 48 | 1.5.2.1 | 观众列表 |  | 100% |  | 黄玉辉 | 2h | 2h |
| 49 | 1.5.2.2 | 观众小主页 | 48 | 100% |  | 黄玉辉 | 8h | 8h |
| 50 | 1.5.2.3 | 消息墙 | 49 | 100% |  | 黄玉辉 | 12h | 12h |
| 51 | 1.5.2.4 | 礼物发送 |  |  | start no earlier than 2016-02-15 | 黄玉辉 | 12h |  |
| 52 | 1.5.2.5 | 礼物流 | 51 |  |  | 黄玉辉 | 12h |  |
| 53 | 1.5.2.6 | 消息发送 | 52 |  |  | 黄玉辉 | 12h |  |
| 54 | 1.5.2.7 | 弹幕流 | 50, 53 |  |  | 黄玉辉 | 12h |  |
| 55 | 1.5.2.8 | 社交分享 | 54 |  |  | 黄玉辉 | 2h |  |

| ID | WBS | Task | Predecessors | Resources | Work |
| --- | --- | --- | --- | --- | --- |
| 56 | 1.6 | **视频录制** | 46 |  |  |
| 57 | 1.6.1 | 直播信息 |  | 陈番顺 | 8h |
| 58 | 1.6.2 | 视频录制 | 57 | 陈番顺 | 40h |
| 59 | 1.7 | **公共界面** | 40 |  |  |
| 60 | 1.7.1 | 网页浏览 |  | 李世杰 | 4h |
| 61 | 1.7.2 | 搜索界面 | 60 | 李世杰 | 8h |
| 62 | 1.7.3 | 映票贡献榜 | 61 | 李世杰 | 8h |
| 63 | 1.7.4 | 聊天界面 | 62 | 李世杰 | 40h |
